# P1EPI_SINNADA

Schedule from MS Project, 2022-11-14 to 2023-01-09, costs in €.

## Calendars

- Huelva Capital: Mon-Fri 09:00-13:00, 15:00-19:00; Sat-Sun off. Exceptions (off unless hours are given): 2022-12-06 (Dia de la constitucion Española), 2022-12-08 (Inmaculada concepcion), 2022-12-26 (Natividad del señor), 2023-01-02 (AÑO NUEVO), 2023-01-06 (Dia de reyes).

## Resources

| Resource | Group | Rate |
| --- | --- | --- |
| Cabina |  | 100 |
| Accesorios material |  | 192 |
| Control principal |  | 550 |
| Carpintero |  | 35 |
| Instalador |  | 30 |
| Ordenador servidor |  | 1500 |
| Ordenador gama media |  | 650 |
| Ordenador gama alta |  | 950 |
| Federico Gonzalez | A,S | 29.15 |
| Cristina Urrutia | JP,A | 29.15 |
| Jose Campos | A,S | 29.15 |
| Gloria Sauciuc | A,P | 29.15 |
| Mike Beer | P,A | 22.83 |
| Sistema operativo servidor |  | 300 |
| Sistema operativo terminal |  | 30 |
| Pack software A |  | 650 |
| Pack software B |  | 30 |
| Agustin Perez | P,A | 22.83 |

## Schedule

| ID | WBS | Task | Type | Duration | Start | Finish | Predecessors | Total slack | Free slack | Resources | Work | Cost |
| --- | --- | --- | --- | --- | --- | --- | --- | --- | --- | --- | --- | --- |
| 1 | 1 | **Proyecto** |  | 35.84d | 2022-11-14 | 2023-01-09 |  | 0d |  |  | 1160.34h | 103,030.08 |
| 2 | 1.1 | **I Montaje del mobiliario** |  | 14.38d | 2022-11-14 | 2022-12-02 |  | 0d |  |  | 171h | 20,378 |
| 3 | 1.1.1 | Montaje del control principal |  | 2d | 2022-11-14 | 2022-11-15 |  | 0d |  | Carpintero; Control principal | 16h | 728 |
| 4 | 1.1.2 | Montaje de las cabinas |  | 80h | 2022-11-16 | 2022-11-29 | 3 | 0d |  | Cabina [5000%]; Carpintero | 80h | 7,800 |
| 5 | 1.1.3 | Montaje de los accesorios |  | 75h | 2022-11-21 | 2022-12-02 | 4SS+3d | 0d |  | Accesorios material [5000%]; Instalador | 75h | 11,850 |
| 6 | 1.2 | **II Montaje de la infraestructura de red y de los equipos informáticos** |  | 17.8d | 2022-12-05 | 2023-01-04 |  | 0d |  |  | 40h | 36,354.39 |
| 7 | 1.2.1 | Instalar canaletas |  | 5d | 2022-12-05 | 2022-12-14 | 5FS+1d | 0d |  |  |  | 300 |
| 8 | 1.2.2 | Instalar cables |  | 5d | 2022-12-14 | 2022-12-21 | 7 | 0d |  |  |  | 400 |
| 9 | 1.2.3 | Instalar tomas de red |  | 3d | 2022-12-21 | 2022-12-27 | 8 | 0d |  |  |  | 200 |
| 10 | 1.2.4 | Realización de pruebas |  | 3d | 2022-12-27 | 2022-12-30 | 9 | 0d |  |  |  | 500 |
| 11 | 1.2.5 | Montaje servidor |  | 1d | 2022-12-30 | 2023-01-03 | 10 | 0d |  | Ordenador servidor; Federico Gonzalez | 8h | 1,911.2 |
| 12 | 1.2.6 | Montaje ordenadores personales |  | 6.4h | 2023-01-03 | 2023-01-04 | 11 | 0d |  | Ordenador gama alta [2000%]; Ordenador gama media [2000%]; Gloria Sauciuc; Jose Campos; Federico Gonzalez; Agustin Perez; Cristina Urrutia | 32h | 33,043.19 |
| 13 | 1.3 | **III Desarrollo de una aplicación informática** |  | 31.33d | 2022-11-14 | 2022-12-30 |  | 4.51d |  |  | 669.34h | 22,065.28 |
| 14 | 1.3.1 | **Análisis** |  | 12d | 2022-11-14 | 2022-11-29 |  | 4.51d |  |  | 304h | 9,972.8 |
| 15 | 1.3.1.1 | Definición del sistema |  | 24h | 2022-11-14 | 2022-11-17 |  | 4.51d | 0d | Federico Gonzalez; Gloria Sauciuc; Jose Campos; Mike Beer | 96h | 3,194.64 |
| 16 | 1.3.1.2 | Establecimiento de requisitos |  | 48h | 2022-11-18 | 2022-11-25 | 15 | 4.51d | 0d | Federico Gonzalez | 48h | 1,399.2 |
| 17 | 1.3.1.3 | Análisis de casos de uso |  | 32h | 2022-11-18 | 2022-11-23 | 15 | 6.51d | 2d | Jose Campos | 32h | 932.8 |
| 18 | 1.3.1.4 | Análisis de clases |  | 24h | 2022-11-18 | 2022-11-22 | 15 | 7.51d | 3d | Gloria Sauciuc; Mike Beer | 48h | 1,795.44 |
| 19 | 1.3.1.5 | Identificación de las interfaces de usuario |  | 24h | 2022-11-18 | 2022-11-22 | 15 | 7.51d | 3d | Cristina Urrutia | 24h | 699.6 |
| 20 | 1.3.1.6 | Análisis de consistencia |  | 8h | 2022-11-28 | 2022-11-28 | 19, 16, 17, 18 | 4.51d | 0d | Federico Gonzalez; Gloria Sauciuc; Jose Campos; Mike Beer | 32h | 1,123.2 |
| 21 | 1.3.1.7 | Aprobación del análisis |  | 8h | 2022-11-29 | 2022-11-29 | 20 | 4.51d | 0d | Gloria Sauciuc; Federico Gonzalez; Jose Campos | 24h | 827.92 |
| 22 | 1.3.2 | **Diseño** |  | 7.33d | 2022-11-30 | 2022-12-13 |  | 4.51d |  |  | 173.34h | 5,759.04 |
| 23 | 1.3.2.1 | Definición de la arquitectura del sistema |  | 10.67h | 2022-11-30 | 2022-12-01 | 21 | 4.51d | 0d | Federico Gonzalez; Jose Campos; Gloria Sauciuc | 32.01h | 1,035.82 |
| 24 | 1.3.2.2 | Diseño de clases |  | 32h | 2022-12-01 | 2022-12-12 | 23 | 4.51d | 0d | Jose Campos; Mike Beer | 48h | 1,427.89 |
| 25 | 1.3.2.3 | Diseño de los datos |  | 32h | 2022-12-01 | 2022-12-12 | 23 | 4.51d | 0d | Federico Gonzalez; Gloria Sauciuc | 64h | 2,308.77 |
| 26 | 1.3.2.4 | Verificación del diseño |  | 8h | 2022-12-12 | 2022-12-13 | 25, 24 | 4.51d | 0d | Federico Gonzalez; Jose Campos; Mike Beer; Cristina Urrutia | 29.33h | 986.56 |
| 27 | 1.3.2.5 | Finalizacion diseño | milestone | 0h | 2022-12-13 | 2022-12-13 | 26 | 16.51d |  | Federico Gonzalez |  |  |

| ID | WBS | Task | Duration | Start | Finish | Predecessors | Total slack | Free slack | Constraint | Resources | Work | Cost |
| --- | --- | --- | --- | --- | --- | --- | --- | --- | --- | --- | --- | --- |
| 28 | 1.3.3 | **Construcción** | 7d | 2022-12-13 | 2022-12-22 |  | 4.51d |  |  |  | 128h | 4,247.14 |
| 29 | 1.3.3.1 | Codificación de las clases | 32h | 2022-12-13 | 2022-12-19 | 26 | 4.51d | 0d |  | Mike Beer; Gloria Sauciuc | 64h | 2,086.3 |
| 30 | 1.3.3.2 | Integración del sistema | 16h | 2022-12-19 | 2022-12-21 | 29 | 4.51d | 0d |  | Mike Beer; Gloria Sauciuc | 32h | 1,043.15 |
| 31 | 1.3.3.3 | Aprobación del sistema | 8h | 2022-12-21 | 2022-12-22 | 30 | 4.51d | 0d |  | Mike Beer; Federico Gonzalez; Gloria Sauciuc; Jose Campos | 32h | 1,117.68 |
| 32 | 1.3.4 | **Pruebas** | 5d | 2022-12-22 | 2022-12-30 |  | 4.51d |  |  |  | 64h | 2,086.3 |
| 33 | 1.3.4.1 | Ejecución pruebas unitarias | 16h | 2022-12-22 | 2022-12-28 | 31 | 4.51d | 0d |  | Gloria Sauciuc; Mike Beer | 32h | 1,043.15 |
| 34 | 1.3.4.2 | Ejecución de las pruebas de integración | 16h | 2022-12-28 | 2022-12-30 | 33 | 4.51d |  |  | Mike Beer; Gloria Sauciuc | 32h | 1,043.15 |
| 35 | 1.4 | **IV Instalación del software y prueba del sistema** | 2.67d | 2023-01-04 | 2023-01-09 |  | 0d |  |  |  | 112h | 18,521.89 |
| 36 | 1.4.1 | Instalar sistema operativo | 4h | 2023-01-04 | 2023-01-04 | 12 | 0d |  |  | Sistema operativo servidor; Sistema operativo terminal [4000%]; Agustin Perez; Cristina Urrutia; Federico Gonzalez; Gloria Sauciuc; Jose Campos; Mike Beer | 24h | 2,236.89 |
| 37 | 1.4.2 | Instalar paquete soft tipo A | 8h | 2023-01-04 | 2023-01-05 | 36 | 0.5d |  |  | Pack software A [2000%]; Gloria Sauciuc; Federico Gonzalez | 16h | 13,577.19 |
| 38 | 1.4.3 | Instalar paquete soft tipo B | 8h | 2023-01-04 | 2023-01-05 | 36 | 0.5d |  |  | Pack software B [2000%]; Jose Campos; Agustin Perez | 16h | 1,039.16 |
| 39 | 1.4.4 | Aplicación ETSISOFT | 12h | 2023-01-04 | 2023-01-09 | 36 | 0d |  |  | Mike Beer; Cristina Urrutia | 24h | 686.14 |
| 40 | 1.4.5 | Prueba global sistema | 5.33h | 2023-01-09 | 2023-01-09 | 37, 38, 39 | 0d |  |  | Federico Gonzalez; Jose Campos; Mike Beer; Gloria Sauciuc; Agustin Perez; Cristina Urrutia | 32h | 982.52 |
| 44 | 1.5 | **Preparacion reunion** | 28d | 2022-11-14 | 2022-12-23 |  | 7.84d |  |  |  | 24h | 769.68 |
| 45 | 1.5.1 | Preparacion reunion 1 | 1d | 2022-11-14 | 2022-11-14 |  | 34.84d |  | start no earlier than 2022-11-14 | Cristina Urrutia | 8h | 256.56 |
| 46 | 1.5.2 | Preparacion reunion 2 | 1d | 2022-12-05 | 2022-12-05 |  | 19.84d |  | start no earlier than 2022-12-05 | Cristina Urrutia | 8h | 256.56 |
| 47 | 1.5.3 | Preparacion reunion 3 | 1d | 2022-12-23 | 2022-12-23 |  | 7.84d |  | start no earlier than 2022-12-23 | Cristina Urrutia | 8h | 256.56 |
| 49 | 1.6 | **Documentacion reunion** | 28d | 2022-11-16 | 2022-12-28 |  | 5.84d |  |  |  | 24h | 769.68 |
| 50 | 1.6.1 | Documentacion reunion 1 | 1d | 2022-11-16 | 2022-11-16 |  | 32.84d |  | start no earlier than 2022-11-16 | Cristina Urrutia | 8h | 256.56 |
| 51 | 1.6.2 | Documentacion reunion 2 | 1d | 2022-12-09 | 2022-12-09 |  | 17.84d |  | start no earlier than 2022-12-09 | Cristina Urrutia | 8h | 256.56 |
| 52 | 1.6.3 | Documentacion reunion 3 | 1d | 2022-12-28 | 2022-12-28 |  | 5.84d |  | start no earlier than 2022-12-28 | Cristina Urrutia | 8h | 256.56 |
| 55 | 1.7 | **Reuniones de seguimiento** | 28d | 2022-11-15 | 2022-12-27 |  | 6.84d |  |  |  | 120h | 4,171.15 |
| 56 | 1.7.1 | Reuniones de seguimiento 1 | 1d | 2022-11-15 | 2022-11-15 |  | 33.84d |  | start no earlier than 2022-11-15 | Cristina Urrutia; Federico Gonzalez; Gloria Sauciuc; Jose Campos; Mike Beer | 40h | 1,288.8 |
| 57 | 1.7.2 | Reuniones de seguimiento 2 | 1d | 2022-12-07 | 2022-12-07 |  | 18.84d |  | start no earlier than 2022-12-07 | Cristina Urrutia; Federico Gonzalez; Gloria Sauciuc; Jose Campos; Mike Beer | 40h | 1,441.18 |
| 58 | 1.7.3 | Reuniones de seguimiento 3 | 1d | 2022-12-27 | 2022-12-27 |  | 6.84d |  | start no earlier than 2022-12-27 | Cristina Urrutia; Federico Gonzalez; Gloria Sauciuc; Jose Campos; Mike Beer | 40h | 1,441.18 |
