# P2FINAL_PARTE2_TRABAJADOR

Schedule from MS Project, 2022-11-17 to 2023-01-25, costs in €, A marks actual dates.

## Calendars

- ETSI: Mon-Fri 09:00-13:00, 15:00-19:00; Sat-Sun off. Exceptions (off unless hours are given): 2022-12-06, 2022-12-08, 2022-12-24 to 2023-01-06.

## Resources

| Resource | Rate |
| --- | --- |
| Jefe A | 41.98 |
| AnalistaW | 33.15 |
| AnalistaD | 29.6 |
| AnalistaP | 26.05 |
| Administrativo | 20.21 |
| ProgramadorJ | 17.78 |
| ProgramadorJEXTRA | 17.78 |

## Schedule

| ID | WBS | Task | Duration | Start | Finish | Predecessors | Complete | Remaining | Baseline start | Baseline finish | Baseline duration | Total slack | Constraint | Resources | Work | Actual work | Cost | Baseline cost | Actual cost |
| --- | --- | --- | --- | --- | --- | --- | --- | --- | --- | --- | --- | --- | --- | --- | --- | --- | --- | --- | --- |
| 1 | 1 | **proyecto** | 37.81d | 2022-11-17 A | 2023-01-25 |  | 21% | 29.96d | 2022-11-17 | 2023-01-30 | 40.5d | 0d |  |  | 1152.01h | 208h | 35,641.87 | 30,283.94 | 8,273.84 |
| 2 | 1.1 | **Requerimientos de los usuarios** | 6d | 2022-11-17 A | 2022-11-24 A |  | 100% |  | 2022-11-17 | 2022-11-24 | 6d |  |  |  | 48h | 48h | 1,519.84 | 1,519.84 | 1,519.84 |
| 3 | 1.1.1 | Toma de requisitos de usuario | 5d | 2022-11-17 A | 2022-11-23 A |  | 100% |  | 2022-11-17 | 2022-11-23 | 5d |  |  | AnalistaD | 40h | 40h | 1,184 | 1,184 | 1,184 |
| 4 | 1.1.2 | Validacion de los requisitos de usuarios | 1d | 2022-11-24 A | 2022-11-24 A | 3 | 100% |  | 2022-11-24 | 2022-11-24 | 1d |  |  | Jefe A | 8h | 8h | 335.84 | 335.84 | 335.84 |
| 5 | 1.2 | **Analisis de requisitos del software** | 15d | 2022-11-17 A | 2022-12-09 |  | 83% | 2.5d | 2022-11-17 | 2022-11-30 | 10d | 0d |  |  | 144h | 112h | 7,977.76 | 4,276.24 | 5,326.48 |
| 6 | 1.2.1 | Estudio de los requisitos software | 3d | 2022-11-17 A | 2022-11-21 A |  | 100% |  | 2022-11-17 | 2022-11-21 | 3d |  |  | AnalistaW; AnalistaP | 48h | 48h | 1,420.8 | 1,420.8 | 1,420.8 |
| 7 | 1.2.2 | Validacion de los requisitos de software | 1d | 2022-11-22 A | 2022-11-22 A | 6 | 100% |  | 2022-11-22 | 2022-11-22 | 1d |  | start no earlier than 2022-11-21 | Jefe A | 8h | 8h | 335.84 | 335.84 | 335.84 |
| 8 | 1.2.3 | Instalacion del software necesario en los PCs | 2d | 2022-12-05 A | 2022-12-07 | 7 | 50% | 1d | 2022-11-23 | 2022-11-28 | 4d | 0d | start no earlier than 2022-12-05 | AnalistaP; ProgramadorJ | 32h | 16h | 4,601.28 | 833.6 | 2,300.64 |
| 9 | 1.2.4 | Preparacion de los puestos de trabajo | 1d | 2022-12-09 | 2022-12-09 | 8 |  |  | 2022-11-29 | 2022-11-30 | 2d | 0d | start no earlier than 2022-11-25 | AnalistaP; ProgramadorJ | 16h |  | 350.64 | 416.8 |  |
| 10 | 1.2.5 | Preparacion del servidor de desarrollo | 4d | 2022-11-22 A | 2022-11-25 A | 6 | 100% |  | 2022-11-22 | 2022-11-25 | 4d |  |  | AnalistaW | 32h | 32h | 1,060.8 | 1,060.8 | 1,060.8 |
| 11 | 1.2.6 | Preparacion del servidor de preexplotacion | 1d | 2022-11-22 A | 2022-11-22 A | 6 | 100% |  | 2022-11-22 | 2022-11-22 | 1d |  |  | AnalistaP | 8h | 8h | 208.4 | 208.4 | 208.4 |
| 12 | 1.3 | **Analisis de requisitos del sistema** | 4.5d | 2022-11-25 A | 2022-12-01 A |  | 100% |  | 2022-11-25 | 2022-12-01 | 4.5d |  |  |  | 48h | 48h | 1,427.52 | 1,427.52 | 1,427.52 |
| 13 | 1.3.1 | Estimacion de hardware necesario | 24h | 2022-11-25 A | 2022-11-29 A | 4 | 100% |  | 2022-11-25 | 2022-11-29 | 24h |  |  | AnalistaD | 24h | 24h | 710.4 | 710.4 | 710.4 |
| 14 | 1.3.2 | Validacion de hardware necesario | 12h | 2022-11-30 A | 2022-12-01 A | 13 | 100% |  | 2022-11-30 | 2022-12-01 | 12h |  |  | Jefe A; ProgramadorJ | 24h | 24h | 717.12 | 717.12 | 717.12 |
| 15 | 1.4 | **Diseño preliminar** | 17d | 2022-12-12 | 2023-01-17 |  |  |  | 2022-12-01 | 2022-12-21 | 12d | 0d |  |  | 112h |  | 4,008.48 | 4,008.48 |  |
| 16 | 1.4.1 | Diseño de los datos y procesos | 6d | 2022-12-12 | 2022-12-19 | 2, 5, 12 |  |  | 2022-12-01 | 2022-12-13 | 6d | 0d |  | Jefe A; AnalistaD | 96h |  | 3,435.84 | 3,435.84 |  |
| 17 | 1.4.2 | Diseño del plan de pruebas | 2d | 2023-01-13 | 2023-01-17 | 16 |  |  | 2022-12-13 | 2022-12-21 | 1.5d | 5.81d |  | AnalistaD; Jefe A | 16h |  | 572.64 | 572.64 |  |
| 18 | 1.5 | **Diseño detallado** | 16.31d | 2022-12-20 | 2023-01-25 |  |  |  | 2022-12-19 | 2023-01-27 | 19.5d | 0.5d |  |  | 136h |  | 4,120.48 | 3,874.56 |  |
| 19 | 1.5.1 | Diseño grafico de la aplicación | 5d | 2022-12-20 | 2023-01-09 | 16 |  |  | 2022-12-19 | 2022-12-23 | 5d | 11.81d | start no earlier than 2022-12-19 | AnalistaW | 40h |  | 1,326 | 1,326 |  |
| 20 | 1.5.2 | **Diseño tecnico de componentes** | 11.31d | 2023-01-10 | 2023-01-25 | 16 |  |  | 2022-12-21 | 2023-01-27 | 17d | 0.5d |  |  | 96h |  | 2,794.48 | 2,548.56 |  |
| 21 | 1.5.2.1 | Presentacion | 1d | 2023-01-12 | 2023-01-13 | 16 |  |  | 2023-01-09 | 2023-01-09 | 1d | 8.06d | start no earlier than 2022-12-19 | AnalistaW | 8h |  | 265.2 | 265.2 |  |
| 22 | 1.5.2.2 | Mantenimiento de explotacion perquera | 2d | 2023-01-10 | 2023-01-11 | 16 |  |  | 2023-01-10 | 2023-01-11 | 2d | 9.81d | start no earlier than 2023-01-10 | AnalistaW | 16h |  | 530.4 | 530.4 |  |
| 23 | 1.5.2.3 | Mantenimiento de historial; Reservas, Tarifas y Eventos | 4d | 2023-01-18 | 2023-01-25 | 16 |  |  | 2023-01-23 | 2023-01-27 | 4d | 0.5d | start no earlier than 2023-01-18 | ProgramadorJ; AnalistaW | 32h |  | 814.88 | 568.96 |  |
| 24 | 1.5.2.4 | Localizacion | 5d | 2023-01-10 | 2023-01-19 | 16 |  |  | 2022-12-21 | 2023-01-11 | 5d | 4.39d | start no earlier than 2022-12-19 | AnalistaD | 40h |  | 1,184 | 1,184 |  |

| ID | WBS | Task | Duration | Start | Finish | Predecessors | Baseline start | Baseline finish | Baseline duration | Total slack | Free slack | Constraint | Resources | Work | Cost | Baseline cost |
| --- | --- | --- | --- | --- | --- | --- | --- | --- | --- | --- | --- | --- | --- | --- | --- | --- |
| 25 | 1.6 | **Diseño de la base de datos** | 8.39d | 2022-12-20 | 2023-01-13 |  | 2022-12-14 | 2022-12-20 | 5d | 0.61d |  |  |  | 48h | 1,519.84 | 1,519.84 |
| 26 | 1.6.1 | Diseño de tablas y relaciones | 3d | 2022-12-20 | 2022-12-22 | 16 | 2022-12-14 | 2022-12-16 | 3d | 0.61d | 0d | start no earlier than 2022-12-14 | AnalistaD | 24h | 710.4 | 710.4 |
| 27 | 1.6.2 | Validacion del diseño de la BD | 3d | 2022-12-23 | 2023-01-13 | 26 | 2022-12-19 | 2022-12-20 | 2d | 0.61d | 0d |  | Jefe A; AnalistaD | 24h | 809.44 | 809.44 |
| 28 | 1.7 | **Construccion** | 17.42d | 2022-12-16 | 2023-01-24 |  | 2022-12-12 | 2023-01-23 | 20.5d | 0d |  |  |  | 312.01h | 7,751.4 | 7,116.74 |
| 29 | 1.7.1 | Construccion del prototipo | 3d | 2023-01-10 | 2023-01-16 | 16SS+5d | 2023-01-18 | 2023-01-23 | 3d | 7d |  | start no earlier than 2022-12-14 | ProgramadorJ | 24h | 426.72 | 426.72 |
| 30 | 1.7.2 | Construccion de la BD | 5d | 2023-01-16 | 2023-01-24 | 27 | 2023-01-11 | 2023-01-16 | 3d | 1.39d |  |  | AnalistaD; ProgramadorJ | 40h | 994.88 | 1,255 |
| 31 | 1.7.3 | Codificacion | 9.39d | 2022-12-16 | 2023-01-12 | 16FS-2d | 2022-12-12 | 2023-01-16 | 15.5d | 0d |  | start no earlier than 2022-12-12 | AnalistaP; ProgramadorJ; Jefe A; ProgramadorJEXTRA | 248.01h | 6,329.8 | 5,435.02 |
| 32 | 1.8 | **Pruebas** | 4.92d | 2023-01-12 | 2023-01-19 |  | 2023-01-16 | 2023-01-24 | 5.5d | 0d |  |  |  | 96h | 2,688.71 | 2,624.08 |
| 33 | 1.8.1 | Pruebas unitarias | 0.75d | 2023-01-12 | 2023-01-13 | 31 | 2023-01-16 | 2023-01-17 | 1d | 0d |  |  | AnalistaP; ProgramadorJ; AnalistaW; AnalistaD | 24h | 639.48 | 615.84 |
| 34 | 1.8.2 | Pruebas de integracion | 0.67d | 2023-01-13 | 2023-01-13 | 33 | 2023-01-17 | 2023-01-18 | 1d | 0d |  |  | AnalistaP; ProgramadorJ; AnalistaD | 16h | 391.63 | 350.64 |
| 35 | 1.8.3 | Pruebas del sistema | 3.5d | 2023-01-13 | 2023-01-19 | 34 | 2023-01-18 | 2023-01-24 | 3.5d | 1.5d | 0d |  | AnalistaP; AnalistaW | 56h | 1,657.6 | 1,657.6 |
| 36 | 1.9 | **Demostracion a los usuarios** | 3d | 2023-01-19 | 2023-01-24 |  | 2023-01-24 | 2023-01-27 | 3d | 1.5d |  |  |  | 48h | 1,491.44 | 1,491.44 |
| 37 | 1.9.1 | Entrenamiento de usuarios | 16h | 2023-01-19 | 2023-01-23 | 35 | 2023-01-24 | 2023-01-26 | 16h | 1.5d | 0d |  | AnalistaW; AnalistaP | 32h | 947.2 | 947.2 |
| 38 | 1.9.2 | Validacion del producto por los usuarios | 1d | 2023-01-23 | 2023-01-24 | 37 | 2023-01-26 | 2023-01-27 | 1d | 1.5d |  |  | Jefe A; AnalistaP | 16h | 544.24 | 544.24 |
| 39 | 1.10 | **Documentacion** | 25.81d | 2022-12-05 | 2023-01-25 |  | 2022-12-19 | 2023-01-30 | 20d | 0d |  |  |  | 160h | 3,136.4 | 2,425.2 |
| 40 | 1.10.1 | Documentacion tecnica de proyecto | 10d | 2022-12-15 | 2023-01-12 | 31FF | 2022-12-19 | 2023-01-16 | 10d | 9.42d |  |  | Administrativo | 80h | 1,616.8 | 1,616.8 |
| 41 | 1.10.2 | Documentacion de usuarios | 5d | 2023-01-18 | 2023-01-25 | 34FS+3d | 2023-01-23 | 2023-01-30 | 5d | 0d |  |  | Administrativo | 40h | 808.4 | 808.4 |
| 45 | 1.10.3 | Formacion trabajadores | 5d | 2022-12-05 | 2022-12-13 |  |  |  |  | 20.81d |  | start no earlier than 2022-12-05 | ProgramadorJEXTRA | 40h | 711.2 |  |
